# G3.0大功率 Device B

Schedule from a web Gantt chart, 2024-06-06 to 2026-04-10.
Every day is a working day

## Schedule

| ID | WBS | Task | Duration | Start | Finish | Predecessors | Complete | Status |
| --- | --- | --- | --- | --- | --- | --- | --- | --- |
| 2 | 1 | Kick off | 5d | 2024-06-06 | 2024-06-10 |  | 100% | done |
| 3 | 2 | MPW 摸底 | 134d | 2024-06-11 | 2024-10-22 | 2 | 100% | done |
| 4 | 3 | **SPW** | 371d | 2025-01-01 | 2026-01-06 |  | 82% |  |
| 5 | 3.1 | Design & Layout | 4d | 2025-01-01 | 2025-01-04 |  |  |  |
| 6 | 3.2 | **Formal Qual** | 181d | 2025-07-10 | 2026-01-06 |  | 83% |  |
| 7 | 3.2.1 | **1st Qaul lot** | 138d | 2025-07-10 | 2025-11-24 |  | 100% |  |
| 8 | 3.2.1.1 | Process | 33d | 2025-07-10 | 2025-08-11 |  | 100% | done |
| 9 | 3.2.1.2 | PKG | 35d | 2025-08-12 | 2025-09-15 | 8 | 100% | done |
| 10 | 3.2.1.3 | FT | 10d | 2025-09-16 | 2025-09-25 | 9 | 100% | done |
| 11 | 3.2.1.4 | **RE验证** | 57d | 2025-09-26 | 2025-11-21 |  | 100% | done |
| 12 | 3.2.1.4.1 | RE168H | 14d | 2025-09-26 | 2025-10-09 | 10 | 100% | done |
| 13 | 3.2.1.4.2 | RE500H | 19d | 2025-10-10 | 2025-10-28 | 12 | 100% | done |
| 14 | 3.2.1.4.3 | RE1008H | 24d | 2025-10-29 | 2025-11-21 | 13 | 100% | done |
| 15 | 3.2.1.5 | AE验证 | 46d | 2025-10-10 | 2025-11-24 | 12 | 100% | done |
| 16 | 3.2.1.6 | Bench test(DS V0.5) | 20d | 2025-10-10 | 2025-10-29 | 12 | 100% | done |
| 17 | 3.2.2 | **2nd&3rd Qual lot** | 72d | 2025-10-27 | 2026-01-06 |  | 39% |  |
| 18 | 3.2.2.1 | FT | 5d | 2025-10-27 | 2025-10-31 |  | 100% | done |
| 19 | 3.2.2.2 | **RE 验证** | 67d | 2025-11-01 | 2026-01-06 | 18 | 36% |  |
| 20 | 3.2.2.2.1 | RE168H | 24d | 2025-11-01 | 2025-11-24 | 18 | 100% | done |
| 21 | 3.2.2.2.2 | RE500H | 19d | 2025-11-25 | 2025-12-13 | 20 |  |  |
| 22 | 3.2.2.2.3 | RE1008H | 24d | 2025-12-14 | 2026-01-06 | 21 |  | waiting |
| 23 | 3.2.2.3 | Bench test(DS V0.9) | 3d | 2025-11-01 | 2025-11-03 | 18 |  |  |
| 24 | 4 | Ramp up | 90d | 2026-01-07 | 2026-04-06 | 22 |  | waiting |
| 25 | 5 | DS V1.0 | 3d | 2026-04-07 | 2026-04-09 | 24 |  | waiting |
| 26 | 6 | 项目结案 | 1d | 2026-04-10 | 2026-04-10 | 25 |  | waiting |
